# Throttle Body Control Platform

Schedule from MS Project, 2024-03-29 to 2024-09-03, status date 2024-03-22, costs in $, A marks actual dates.

## Calendars

- Standard: Mon-Fri 08:00-12:00, 13:00-17:00; Sat-Sun off.

## Resources

| Resource | Rate |
| --- | --- |
| Oliver | 23 |
| Nye | 23 |

## Schedule

| ID | WBS | Task | Type | Duration | Start | Finish | Predecessors | Complete | Baseline start | Baseline finish | Baseline duration | Baseline 1 start | Baseline 1 finish | Resources | Work | Actual work | Cost | Actual cost |
| --- | --- | --- | --- | --- | --- | --- | --- | --- | --- | --- | --- | --- | --- | --- | --- | --- | --- | --- |
| 1 | 1 | **Phase 1 - Project Discussion** |  | 15d | 2024-03-29 A | 2024-04-18 A |  | 100% | 2024-03-22 | 2024-03-26 | 2.25d | 2024-03-22 | 2024-04-11 |  | 240h | 240h | 5,520 | 5,520 |
| 2 | 1.1 | Supervisor Selection |  | 1w | 2024-03-29 A | 2024-04-04 A |  | 100% | 2024-03-22 | 2024-03-22 | 0.15w | 2024-03-22 | 2024-03-28 | Oliver; Nye | 80h | 80h | 1,840 | 1,840 |
| 3 | 1.2 | Project Selection |  | 1w | 2024-04-05 A | 2024-04-11 A | 2 | 100% | 2024-03-22 | 2024-03-25 | 0.15w | 2024-03-29 | 2024-04-04 | Oliver; Nye | 80h | 80h | 1,840 | 1,840 |
| 4 | 1.3 | Project Meeting Introduction |  | 1w | 2024-04-11 A | 2024-04-18 A | 3 | 100% | 2024-03-25 | 2024-03-26 | 0.15w | 2024-04-05 | 2024-04-11 | Oliver; Nye | 80h | 80h | 1,840 | 1,840 |
| 5 | 1.4 | Milestone: Project Selected | milestone | 0w | 2024-04-11 A | 2024-04-11 A |  | 100% | 2024-03-26 | 2024-03-26 | 0w | 2024-04-11 | 2024-04-11 |  |  |  |  |  |
| 6 | 2 | **Phase 2 - Hardware Functionality** |  | 2.25d | 2024-04-12 A | 2024-04-16 A |  | 100% | 2024-03-26 | 2024-03-28 | 2.25d | 2024-04-12 | 2024-04-16 |  | 42h | 42h | 966 | 966 |
| 7 | 2.1 | Understand Wiring Diagram |  | 0.15w | 2024-04-12 A | 2024-04-12 A | 4 | 100% | 2024-03-26 | 2024-03-26 | 0.15w | 2024-04-12 | 2024-04-12 | Oliver; Nye | 12h | 12h | 276 | 276 |
| 8 | 2.2 | Accelerator Pedal Testing |  | 0.15w | 2024-04-12 A | 2024-04-15 A | 7 | 100% | 2024-03-27 | 2024-03-27 | 0.15w | 2024-04-12 | 2024-04-15 | Oliver; Nye | 12h | 12h | 276 | 276 |
| 9 | 2.3 | Throttle Body Testing |  | 0.15w | 2024-04-12 A | 2024-04-15 A | 7 | 100% | 2024-03-27 | 2024-03-27 | 0.15w | 2024-04-12 | 2024-04-15 | Oliver; Nye | 12h | 12h | 276 | 276 |
| 10 | 2.4 | Hardware Communication Testing |  | 0.15w | 2024-04-15 A | 2024-04-16 A | 8, 9 | 100% | 2024-03-27 | 2024-03-28 | 0.15w | 2024-04-15 | 2024-04-16 | Oliver | 6h | 6h | 138 | 138 |
| 11 | 2.5 | Milestone: Testing Completed | milestone | 0w | 2024-04-16 A | 2024-04-16 A | 10 | 100% | 2024-03-28 | 2024-03-28 | 0w | 2024-04-16 | 2024-04-16 |  |  |  |  |  |
| 12 | 3 | **Phase 3 - Initial Research/Prototype** |  | 20d | 2024-04-16 A | 2024-05-14 A |  | 100% | 2024-03-28 | 2024-04-25 | 20d | 2024-04-16 | 2024-05-14 |  | 400h | 400h | 9,200 | 9,200 |
| 13 | 3.1 | Micro-controller |  | 1w | 2024-04-16 A | 2024-04-23 A | 10 | 100% | 2024-03-28 | 2024-04-04 | 1w | 2024-04-16 | 2024-04-23 | Oliver | 40h | 40h | 920 | 920 |
| 14 | 3.2 | Control Application |  | 1w | 2024-04-23 A | 2024-04-30 A | 13 | 100% | 2024-04-04 | 2024-04-11 | 1w | 2024-04-23 | 2024-04-30 | Oliver; Nye | 80h | 80h | 1,840 | 1,840 |
| 15 | 3.3 | Control Method |  | 1w | 2024-04-30 A | 2024-05-07 A | 14 | 100% | 2024-04-11 | 2024-04-18 | 1w | 2024-04-30 | 2024-05-07 | Oliver; Nye | 80h | 80h | 1,840 | 1,840 |
| 16 | 3.4 | Bipolar Voltage Chopper (H-Bridge) |  | 1w | 2024-04-23 A | 2024-04-30 A | 13 | 100% | 2024-04-04 | 2024-04-11 | 1w | 2024-04-23 | 2024-04-30 | Nye | 40h | 40h | 920 | 920 |
| 17 | 3.5 | Signal Scaling |  | 1w | 2024-04-23 A | 2024-04-30 A | 13 | 100% | 2024-04-04 | 2024-04-11 | 1w | 2024-04-23 | 2024-04-30 | Oliver | 40h | 40h | 920 | 920 |
| 18 | 3.6 | Calibration of Pedal Sensor Feedback |  | 1w | 2024-04-30 A | 2024-05-07 A | 17 | 100% | 2024-04-11 | 2024-04-18 | 1w | 2024-04-30 | 2024-05-07 | Oliver | 40h | 40h | 920 | 920 |
| 19 | 3.7 | Calibration of Throttle Body Feedback |  | 1w | 2024-04-30 A | 2024-05-07 A | 17 | 100% | 2024-04-11 | 2024-04-18 | 1w | 2024-04-30 | 2024-05-07 | Oliver | 40h | 40h | 920 | 920 |
| 20 | 3.8 | Recreate Hardware Setup |  | 1w | 2024-05-07 A | 2024-05-14 A | 18, 19 | 100% | 2024-04-18 | 2024-04-25 | 1w | 2024-05-07 | 2024-05-14 | Oliver | 40h | 40h | 920 | 920 |
| 21 | 3.9 | Milestone: Research Completed | milestone | 0w | 2024-04-30 A | 2024-04-30 A | 17 | 100% | 2024-04-11 | 2024-04-11 | 0w | 2024-04-30 | 2024-04-30 |  |  |  |  |  |
| 22 | 4 | **Phase 4 - Hardware Prototype** |  | 25d | 2024-05-14 A | 2024-06-18 A |  | 100% | 2024-04-25 | 2024-05-30 | 25d | 2024-05-14 | 2024-06-18 |  | 200h | 200h | 4,600 | 4,600 |
| 23 | 4.1 | Acquire Eagle Component Library |  | 1w | 2024-05-14 A | 2024-05-21 A | 20 | 100% | 2024-04-25 | 2024-05-02 | 1w | 2024-05-14 | 2024-05-21 | Nye | 40h | 40h | 920 | 920 |
| 24 | 4.2 | Create Schematic Diagram (Eagle) |  | 1w | 2024-05-21 A | 2024-05-28 A | 23 | 100% | 2024-05-02 | 2024-05-09 | 1w | 2024-05-21 | 2024-05-28 | Nye | 40h | 40h | 920 | 920 |
| 25 | 4.3 | Board Layout (Eagle) |  | 1w | 2024-05-28 A | 2024-06-04 A | 24 | 100% | 2024-05-09 | 2024-05-16 | 1w | 2024-05-28 | 2024-06-04 | Nye | 40h | 40h | 920 | 920 |
| 26 | 4.4 | PCB Prototype Assembly |  | 1w | 2024-06-04 A | 2024-06-11 A | 25 | 100% | 2024-05-16 | 2024-05-23 | 1w | 2024-06-04 | 2024-06-11 | Nye | 40h | 40h | 920 | 920 |
| 27 | 4.5 | PCB Sub-circuit Testing |  | 1w | 2024-06-11 A | 2024-06-18 A | 26 | 100% | 2024-05-23 | 2024-05-30 | 1w | 2024-06-11 | 2024-06-18 | Nye | 40h | 40h | 920 | 920 |
| 28 | 4.6 | Milestone: Prototype Completed | milestone | 0w | 2024-06-18 A | 2024-06-18 A | 27 | 100% | 2024-05-30 | 2024-05-30 | 0w | 2024-06-18 | 2024-06-18 | Oliver; Nye |  |  |  |  |

| ID | WBS | Task | Type | Duration | Start | Finish | Predecessors | Complete | Remaining | Baseline start | Baseline finish | Baseline duration | Baseline 1 start | Baseline 1 finish | Total slack | Free slack | Resources | Work | Actual work | Cost | Actual cost |
| --- | --- | --- | --- | --- | --- | --- | --- | --- | --- | --- | --- | --- | --- | --- | --- | --- | --- | --- | --- | --- | --- |
| 29 | 5 | **Phase 5 - Final Hardware Version** |  | 50d | 2024-06-18 A | 2024-08-27 |  | 50% | 25d |  |  |  |  |  | 0d |  |  |  |  |  |  |
| 30 | 5.1 | Acquire Eagle Component Library |  | 1w | 2024-06-18 A | 2024-06-25 A | 28 | 100% |  |  |  |  |  |  |  |  |  |  |  |  |  |
| 31 | 5.2 | Create Schematic Diagram (Eagle) |  | 2w | 2024-06-25 A | 2024-07-09 A | 30 | 100% |  |  |  |  |  |  |  |  |  |  |  |  |  |
| 32 | 5.3 | New Board Layout (Eagle) |  | 2w | 2024-07-09 A | 2024-07-23 A | 31 | 100% |  |  |  |  |  |  |  |  |  |  |  |  |  |
| 33 | 5.4 | Final Version PCB Assembly |  | 4w | 2024-07-23 | 2024-08-20 | 32 |  |  |  |  |  |  |  | 0d |  |  |  |  |  |  |
| 34 | 5.5 | PCB Sub-circuit Testing |  | 1w | 2024-08-20 | 2024-08-27 | 33 |  |  |  |  |  |  |  | 0d |  |  |  |  |  |  |
| 35 | 5.6 | Milestone: Final Version PCB Completed | milestone | 0w | 2024-08-27 | 2024-08-27 | 34 |  |  |  |  |  |  |  | 0d |  |  |  |  |  |  |
| 36 | 6 | **Phase 6 - PCB Casing** |  | 20d | 2024-07-23 A | 2024-08-20 |  | 50% | 10d |  |  |  |  |  | 10d |  |  |  |  |  |  |
| 37 | 6.1 | 3D Modelling of The PCB |  | 1w | 2024-07-23 A | 2024-07-30 A | 32 | 100% |  |  |  |  |  |  |  |  |  |  |  |  |  |
| 38 | 6.2 | 3D Modelling of The PCB case |  | 1w | 2024-07-30 A | 2024-08-06 A | 37 | 100% |  |  |  |  |  |  |  |  |  |  |  |  |  |
| 39 | 6.3 | 3D Printing The PCB Case |  | 2w | 2024-08-06 | 2024-08-20 | 38 |  |  |  |  |  |  |  | 10d | 0d |  |  |  |  |  |
| 41 | 7 | **Phase 7 - Advanced control system implementation** |  | 55d | 2024-06-18 A | 2024-09-03 |  | 57% | 23.57d | 2024-05-30 | 2024-06-14 | 11.5d | 2024-06-18 | 2024-07-09 | 0d |  |  | 160h | 100h | 3,680 | 2,300 |
| 42 | 7.1 | Control System Implimentation |  | 2w | 2024-06-18 A | 2024-07-02 A | 27 | 100% |  | 2024-05-30 | 2024-06-07 | 1.15w | 2024-06-18 | 2024-07-02 |  |  | Oliver | 80h | 80h | 1,840 | 1,840 |
| 43 | 7.2 | PID Control System Testing |  | 2w | 2024-06-18 A | 2024-07-02 | 27 | 75% | 0.5w |  |  |  |  |  | 45d |  |  |  |  |  |  |
| 44 | 7.3 | Advance Control System Testing |  | 2w | 2024-07-02 A | 2024-07-16 | 42 | 25% | 1.5w | 2024-06-07 | 2024-06-14 | 1.15w | 2024-07-02 | 2024-07-09 | 30d | 0d | Oliver | 80h | 20h | 1,840 | 460 |
| 45 | 7.4 | Full Control System Testing |  | 1w | 2024-08-27 | 2024-09-03 | 35, 44 |  |  |  |  |  |  |  | 0d |  |  |  |  |  |  |
| 46 | 7.5 | Milestone: Testing Completed | milestone | 0w | 2024-07-16 | 2024-07-16 | 44 |  |  |  |  |  | 2024-07-09 | 2024-07-09 | 35d |  |  |  |  |  |  |
| 47 | 8 | **Phase 8 - Review/Revise** |  | 15d | 2024-07-02 | 2024-07-23 |  |  |  | 2024-06-07 | 2024-06-21 | 10.75d | 2024-07-02 | 2024-07-16 | 30d |  |  | 80h |  | 1,840 |  |
| 48 | 8.1 | PCB Revision |  | 1w | 2024-07-02 | 2024-07-09 | 42 |  |  | 2024-06-07 | 2024-06-14 | 1w | 2024-07-02 | 2024-07-09 | 5d |  | Nye | 40h |  | 920 |  |
| 49 | 8.2 | PCB enclosure |  | 1w | 2024-07-16 | 2024-07-23 | 44 |  |  | 2024-06-17 | 2024-06-21 | 1w | 2024-07-09 | 2024-07-16 | 30d | 0d | Nye | 40h |  | 920 |  |
| 50 | 8.3 | Milestone: Revision Completed | milestone | 0w | 2024-07-23 | 2024-07-23 | 49 |  |  |  |  |  | 2024-07-16 | 2024-07-16 | 30d |  |  |  |  |  |  |
